# PapARt

Schedule from GanttProject, 2013-10-14 to 2015-06-30.
inria

## Calendars

- Project calendar: Mon-Fri working; Sat-Sun off.

## Schedule

| ID | WBS | Task | Type | Duration | Start | Finish | Predecessors | Complete |
| --- | --- | --- | --- | --- | --- | --- | --- | --- |
| 1 | 1 | **Website & Com** |  | 171d | 2014-09-02 | 2015-04-28 |  |  |
| 2 | 1.1 | Website - dev version |  | 8d | 2014-09-02 | 2014-09-11 |  |  |
| 3 | 1.2 | Website - Public version |  | 42d | 2014-12-01 | 2015-01-27 |  |  |
| 4 | 1.3 | Video - Examples |  | 8d | 2015-03-17 | 2015-03-26 | 33 |  |
| 5 | 1.4 | Video - App |  | 4d | 2015-04-10 | 2015-04-15 | 34 |  |
| 6 | 1.5 | Video - Presentation |  | 4d | 2015-04-16 | 2015-04-21 | 5 |  |
| 7 | 1.6 | Website - clean Video |  | 5d | 2015-04-22 | 2015-04-28 | 6 |  |
| 8 | 1.7 | Website - Release |  | 1d | 2015-02-02 | 2015-02-02 |  |  |
| 9 | 2 | **Development 2014** |  | 356d | 2013-10-14 | 2015-02-23 |  | 50% |
| 10 | 2.1 | Refactor Kinect class |  | 10d | 2014-09-01 | 2014-09-12 |  |  |
| 11 | 2.2 | Name change JavaCV to Bytedeco |  | 3d | 2014-09-09 | 2014-09-11 |  |  |
| 12 | 2.3 | Natural feature Tracking |  | 6d | 2014-09-12 | 2014-09-19 |  |  |
| 13 | 2.4 | Automatic Instanciation of PaperScren |  | 7d | 2014-09-15 | 2014-09-23 |  |  |
| 14 | 2.5 | **Camera API** |  | 106d | 2014-09-29 | 2015-02-23 |  |  |
| 15 | 2.5.1 | New Camera API |  | 7d | 2014-09-29 | 2014-10-07 |  |  |
| 16 | 2.5.2 | FlyCapture2 Support |  | 89d | 2014-10-22 | 2015-02-23 |  |  |
| 17 | 2.5.3 | VideoInput Support (Windows) |  | 3d | 2015-01-26 | 2015-01-28 |  |  |
| 18 | 2.6 | Interaction Metaphor |  | 10d | 2014-10-01 | 2014-10-14 |  |  |
| 19 | 2.7 | **New Touch Detection** |  | 36d | 2014-10-02 | 2014-11-20 |  |  |
| 20 | 2.7.1 | Refactor |  | 23d | 2014-10-02 | 2014-11-03 |  |  |
| 21 | 2.7.2 | User access to Touch Info |  | 13d | 2014-11-04 | 2014-11-20 | 20 |  |
| 22 | 2.8 | Mode without Camera nor Kinect |  | 275d | 2013-10-14 | 2014-10-31 |  | 100% |
| 23 | 2.9 | Configuration Files |  | 7d | 2014-10-20 | 2014-10-28 |  |  |
| 24 | 2.10 | Stable Version 0.4 | milestone | 0d | 2014-10-31 | 2014-10-31 |  |  |
| 25 | 2.11 | GrayCode Scanner update |  | 7d | 2014-11-17 | 2014-11-25 |  |  |
| 26 | 2.12 | new Connexity & Normal computation |  | 5d | 2014-11-24 | 2014-11-28 |  |  |
| 27 | 2.13 | Color Detection |  | 6d | 2014-11-28 | 2014-12-05 |  |  |
| 28 | 2.14 | Object's color detection |  | 6d | 2014-12-08 | 2014-12-15 | 27 |  |
| 29 | 2.15 | Screen Capture demo Application |  | 7d | 2014-11-28 | 2014-12-08 |  |  |
| 30 | 2.16 | Missile Demo |  | 24d | 2014-12-01 | 2015-01-01 |  |  |
| 31 | 2.17 | TEEGI Demo |  | 24d | 2014-12-01 | 2015-01-01 |  |  |

| ID | WBS | Task | Duration | Start | Finish | Predecessors | Complete |
| --- | --- | --- | --- | --- | --- | --- | --- |
| 32 | 3 | **Development 2015** | 332d | 2014-03-24 | 2015-06-30 |  | 44% |
| 33 | 3.1 | Refactor and Fix examples | 6d | 2015-03-09 | 2015-03-16 |  |  |
| 34 | 3.2 | Refactor and Fix existing Apps | 10d | 2015-03-27 | 2015-04-09 | 4 |  |
| 35 | 3.3 | Manual Calibration | 270d | 2014-03-24 | 2015-04-03 |  | 50% |
| 36 | 3.4 | Structured Light Calibration | 265d | 2014-04-07 | 2015-04-10 |  | 68% |
| 37 | 3.5 | Precise and Imprecise Calibration support | 8d | 2015-04-13 | 2015-04-22 | 35, 36 |  |
| 38 | 3.6 | Integration of new TechFest Features | 5d | 2015-03-17 | 2015-03-23 | 33 |  |
| 39 | 3.7 | Erorr messages at camera initialization | 10d | 2015-03-16 | 2015-03-27 |  |  |
| 40 | 3.8 | Table As marker for Apps & manual Extrinsics | 4d | 2015-04-23 | 2015-04-28 | 37 |  |
| 41 | 3.9 | Manual Extrinsics | 4d | 2015-04-23 | 2015-04-28 | 37 |  |
| 42 | 3.10 | Gesture Interaction to invoke Apps | 4d | 2015-04-29 | 2015-05-04 | 40 |  |
| 43 | 3.11 | **New Touch Detection** | 297d | 2014-05-12 | 2015-06-30 |  | 25% |
| 44 | 3.11.1 | Object Detection | 273d | 2014-05-12 | 2015-05-27 |  | 40% |
| 45 | 3.11.2 | Hand Detection | 120d | 2014-11-24 | 2015-05-08 |  | 29% |
| 46 | 3.11.3 | Kinect 2 & new Depth Cam | 108d | 2015-01-30 | 2015-06-30 |  | 26% |
| 47 | 3.12 | Gui using ControlP5 | 35d | 2015-02-16 | 2015-04-03 |  | 90% |
| 48 | 3.13 | **Calibration and Assistance Software** | 23d | 2015-04-06 | 2015-05-06 |  |  |
| 49 | 3.13.1 | Touch Detection & Tracking Calibration App | 10d | 2015-04-23 | 2015-05-06 | 37 |  |
| 50 | 3.13.2 | Camera and Projector management App | 10d | 2015-04-06 | 2015-04-17 | 35 |  |
| 51 | 4 | **Project Management** | 93d | 2014-11-20 | 2015-03-30 |  | 26% |
| 52 | 4.1 | Compilation with Maven | 4d | 2014-11-20 | 2014-11-25 |  |  |
| 53 | 4.2 | GuiModes Library on GitHub | 1d | 2015-01-05 | 2015-01-05 |  |  |
| 54 | 4.3 | TuioPapARt Library on GitHub | 2d | 2015-01-26 | 2015-01-27 |  |  |
| 55 | 4.4 | Continuous Integration Init | 6d | 2015-01-20 | 2015-01-27 |  |  |
| 56 | 4.5 | Windows Tests | 5d | 2015-02-02 | 2015-02-06 |  |  |
| 57 | 4.6 | Study of vvvv for PapARt | 5d | 2015-02-09 | 2015-02-13 | 56 |  |
| 58 | 4.7 | ControlP5 for PapARt fork on GitHub | 4d | 2015-02-17 | 2015-02-20 |  |  |
| 59 | 4.8 | Processing.org on Maven central | 31d | 2015-02-16 | 2015-03-30 |  | 50% |

| ID | WBS | Task | Duration | Start | Finish |
| --- | --- | --- | --- | --- | --- |
| 60 | 5 | **Demos** | 52d | 2014-10-23 | 2015-01-02 |
| 61 | 5.1 | Nem Summit | 2d | 2014-10-23 | 2014-10-24 |
| 62 | 5.2 | TechFest 2015 | 2d | 2015-01-01 | 2015-01-02 |
